# Business Intelligence

Schedule from MS Project, 2020-06-01 to 2022-07-18, costs in $, A marks actual dates.

## Calendars

- Standard: Mon-Fri 08:00-12:00, 13:00-17:00; Sat-Sun off.

## Resources

| Resource | Rate |
| --- | --- |
| Project Manager1 | 72.73 |
| Project Manager2 | 68.18 |
| Senior Architect | 63.64 |
| Technical Lead | 59.09 |
| Quality Assurance Lead | 50 |
| Business Intelligence Analyst | 50 |
| System Analyst1 | 54.55 |
| System Analyst2 | 50 |
| Developer1 | 56.82 |
| Developer2 | 54.55 |
| Developer3 | 50 |
| Developer4 | 45.45 |
| Developer5 | 45.45 |
| Developer6 | 40.91 |
| Developer7 | 40.91 |
| Developer8 | 40.91 |
| Tester1 | 43.18 |
| Tester2 | 38.64 |
| PDA1 | 500 |
| PDA2 | 500 |
| PDA3 | 500 |
| Laptop1 | 2000 |
| Laptop2 | 2000 |
| Laptop3 | 2000 |
| Laptop4 | 1600 |
| Laptop5 | 1600 |
| Laptop6 | 1600 |
| Laptop7 | 1600 |
| Laptop8 | 1600 |
| Laptop9 | 1500 |
| Laptop10 | 1500 |
| Laptop11 | 1500 |
| Laptop12 | 1500 |
| Cellphone1 | 1000 |
| Cellphone2 | 1000 |
| Cellphone3 | 800 |
| Cellphone4 | 800 |
| Cellphone5 | 800 |
| Cellphone6 | 800 |
| Cellphone7 | 800 |
| Cellphone8 | 800 |
| Desktop1 | 1200 |
| Desktop2 | 1200 |
| Desktop3 | 1200 |
| Desktop4 | 1200 |
| Desktop5 | 1200 |
| Desktop6 | 1200 |
| Developer9 | 54.55 |
| Developer10 | 40.91 |
| Laptop13 | 1500 |
| Desktop7 | 1200 |

## Schedule

| ID | WBS | Task | Type | Duration | Start | Finish | Predecessors | Complete | Remaining | Baseline start | Baseline finish | Baseline duration | Total slack | Resources | Work | Actual work | Cost | Baseline cost | Actual cost |
| --- | --- | --- | --- | --- | --- | --- | --- | --- | --- | --- | --- | --- | --- | --- | --- | --- | --- | --- | --- |
| 1 | 1 | **SPM_Project_BusinessIntelligence** |  | 555.91d | 2020-06-01 A | 2022-07-18 |  | 51% | 271.44d | 2020-06-01 | 2022-08-08 | 571d | 0d |  | 15920h | 4284h | 1,130,473.19 | 1,120,218.88 | 355,344.41 |
| 2 | 1.1 | **Project Initiation** |  | 87d | 2020-06-01 A | 2020-09-29 A |  | 100% |  | 2020-06-01 | 2020-09-29 | 87d |  |  | 1208h | 1208h | 100,355.28 | 100,355.28 | 100,355.28 |
| 3 | 1.1.1 | Develop project charter |  | 21d | 2020-06-01 A | 2020-06-29 A |  | 100% |  | 2020-06-01 | 2020-06-29 | 21d |  | Cellphone1; Laptop1; PDA1; Project Manager1 | 168h | 168h | 15,718.64 | 15,718.64 | 15,718.64 |
| 4 | 1.1.2 | Develop Statement Of Work |  | 24d | 2020-06-30 A | 2020-07-31 A | 3 | 100% |  | 2020-06-30 | 2020-07-31 | 24d |  | Cellphone2; Laptop2; PDA2; Project Manager2 | 192h | 192h | 16,590.56 | 16,590.56 | 16,590.56 |
| 5 | 1.1.3 | Develop preliminary scope development |  | 20d | 2020-08-03 A | 2020-08-28 A | 3, 4 | 100% |  | 2020-08-03 | 2020-08-28 | 20d |  | Cellphone1; Cellphone2; Laptop1; Laptop2; PDA1; PDA2; Project Manager1; Project Manager2 | 320h | 320h | 29,545.6 | 29,545.6 | 29,545.6 |
| 6 | 1.1.4 | Develop preliminary architectural model |  | 22d | 2020-08-31 A | 2020-09-29 A | 3, 4, 5 | 100% |  | 2020-08-31 | 2020-09-29 | 22d |  | Business Intelligence Analyst; Cellphone3; Cellphone4; Cellphone6; Laptop3; Laptop4; Laptop6; PDA3; Senior Architect; Technical Lead | 528h | 528h | 38,500.48 | 38,500.48 | 38,500.48 |
| 7 | 1.1.5 | Project initiation complete | milestone | 0d | 2020-09-29 A | 2020-09-29 A | 3, 4, 5, 6 | 100% |  | 2020-09-29 | 2020-09-29 | 0d |  | PDA1; PDA2; Project Manager1; Project Manager2; Cellphone1; Cellphone2; Laptop1; Laptop2 |  |  |  |  |  |
| 8 | 1.2 | **Project plan** |  | 135d | 2020-09-30 A | 2021-04-06 A |  | 100% |  | 2020-09-30 | 2021-04-06 | 135d |  |  | 2608h | 2608h | 225,865.04 | 225,865.04 | 225,865.04 |
| 9 | 1.2.1 | Develop scope management plan |  | 17d | 2020-09-30 A | 2020-10-22 A | 2 | 100% |  | 2020-09-30 | 2020-10-22 | 17d |  | Cellphone1; Cellphone2; Laptop1; Laptop2; PDA1; PDA2; Project Manager1; Project Manager2 | 272h | 272h | 26,163.76 | 26,163.76 | 26,163.76 |
| 10 | 1.2.2 | Develop change management plan |  | 44d | 2020-10-23 A | 2020-12-23 A | 9 | 100% |  | 2020-10-23 | 2020-12-23 | 44d |  | Cellphone2; Cellphone3; Laptop2; Laptop3; PDA2; PDA3; Project Manager2; Senior Architect | 384h | 384h | 32,109.44 | 32,109.44 | 32,109.44 |
| 11 | 1.2.3 | Develop initial descriptive budget |  | 45d | 2020-12-24 A | 2021-02-24 A | 9, 10 | 100% |  | 2020-12-24 | 2021-02-24 | 45d |  | Cellphone1; Laptop1; PDA1; Project Manager1; Cellphone2; Laptop2; PDA2; Project Manager2 | 432h | 432h | 37,436.56 | 37,436.56 | 37,436.56 |
| 12 | 1.2.4 | Develop schedule |  | 28d | 2021-02-25 A | 2021-04-05 A | 10, 11 | 100% |  | 2021-02-25 | 2021-04-05 | 28d |  | Cellphone1; Cellphone2; Laptop1; Laptop2; PDA1; PDA2; Project Manager1; Project Manager2 | 352h | 352h | 31,800.16 | 31,800.16 | 31,800.16 |
| 13 | 1.2.5 | Develop quality management plan |  | 37d | 2020-09-30 A | 2020-11-19 A | 2 | 100% |  | 2020-09-30 | 2020-11-19 | 37d |  | Cellphone4; Cellphone5; Laptop2; Laptop4; Laptop5; PDA2; Project Manager2; Quality Assurance Lead; Technical Lead | 480h | 480h | 35,663.2 | 35,663.2 | 35,663.2 |
| 14 | 1.2.6 | Develop human resource plan |  | 18d | 2020-12-24 A | 2021-01-18 A | 10, 13 | 100% |  | 2020-12-24 | 2021-01-18 | 18d |  | Cellphone2; Cellphone4; Laptop2; Laptop4; PDA2; Project Manager2; Technical Lead | 288h | 288h | 24,226.88 | 24,226.88 | 24,226.88 |
| 15 | 1.2.7 | Develop risk management plan |  | 33d | 2021-01-19 A | 2021-03-04 A | 10, 14 | 100% |  | 2021-01-19 | 2021-03-04 | 33d |  | Cellphone1; Laptop1; PDA1; Project Manager1; System Analyst1; Cellphone7; Laptop7 | 384h | 384h | 30,337.76 | 30,337.76 | 30,337.76 |
| 16 | 1.2.8 | Project plan complete |  | 1d | 2021-04-06 A | 2021-04-06 A | 9, 10, 11, 12, 13, 14, 15 | 100% |  | 2021-04-06 | 2021-04-06 | 1d |  | Cellphone1; Cellphone2; Laptop1; Laptop2; PDA1; PDA2; Project Manager1; Project Manager2 | 16h | 16h | 8,127.28 | 8,127.28 | 8,127.28 |
| 17 | 1.3 | **Project Execution** |  | 332.91d | 2021-04-07 A | 2022-07-15 |  | 6% | 313.41d | 2021-04-07 | 2022-08-05 | 348d | 0d |  | 12096h | 468h | 800,207.43 | 789,953.12 | 29,124.09 |
| 18 | 1.3.1 | **Release 1** |  | 104.45d | 2021-04-07 A | 2021-08-31 |  | 19% | 84.95d | 2021-04-07 | 2021-09-06 | 109d | 0d |  | 3712h | 468h | 234,801.08 | 232,265.44 | 29,124.09 |
| 19 | 1.3.1.1 | Analysis phase |  | 28d | 2021-04-07 A | 2021-05-14 | 8 | 70% | 8.5d | 2021-04-07 | 2021-05-14 | 28d | 0d | Business Intelligence Analyst; Cellphone6; Cellphone7; Cellphone8; Laptop6; Laptop7; Laptop8; System Analyst1; System Analyst2 | 672h | 468h | 41,819.2 | 41,819.2 | 29,124.09 |
| 20 | 1.3.1.2 | Design phase |  | 28d | 2021-05-17 | 2021-06-23 | 19 |  |  | 2021-05-17 | 2021-06-23 | 28d | 0d | Business Intelligence Analyst; Cellphone3; Laptop3; PDA3; Senior Architect; Technical Lead; Cellphone4; Cellphone6; Laptop4; Laptop6 | 672h |  | 46,791.52 | 46,791.52 |  |
| 21 | 1.3.1.3 | Construction phase |  | 20.45d | 2021-06-24 | 2021-07-22 | 20 |  |  | 2021-06-24 | 2021-07-28 | 25d | 0d | Developer1; Developer2; Developer3; Developer4; Developer5; Developer6; Developer7; Cellphone4; Desktop1; Desktop2; Desktop3; Desktop4; Laptop4; Laptop9; Laptop10; Laptop11; Technical Lead; Desktop5; Desktop6; Developer8; Desktop7; Developer9; Developer10; Laptop13 | 1800h |  | 103,453.64 | 100,918 |  |
| 22 | 1.3.1.4 | Validation phase |  | 15d | 2021-07-22 | 2021-08-12 | 21 |  |  | 2021-07-29 | 2021-08-18 | 15d | 0d | Cellphone5; Desktop5; Laptop5; Laptop12; Quality Assurance Lead; Tester1; Tester2 | 360h |  | 20,918.4 | 20,918.4 |  |
| 23 | 1.3.1.5 | Deployment phase |  | 10d | 2021-08-12 | 2021-08-26 | 22 |  |  | 2021-08-19 | 2021-09-01 | 10d | 0d | Cellphone4; Developer1; Laptop4; Laptop9; Technical Lead | 160h |  | 13,172.8 | 13,172.8 |  |
| 24 | 1.3.1.6 | Closeout |  | 3d | 2021-08-26 | 2021-08-31 | 23 |  |  | 2021-09-02 | 2021-09-06 | 3d | 0d | Cellphone3; Cellphone4; Laptop3; Laptop4; PDA3; Senior Architect; Technical Lead | 48h |  | 8,645.52 | 8,645.52 |  |
| 25 | 1.3.1.7 | Release 1 Complete | milestone | 0d | 2021-08-31 | 2021-08-31 | 24 |  |  | 2021-09-06 | 2021-09-06 | 0d | 0d | Cellphone1; Cellphone2; Laptop1; Laptop2; PDA1; PDA2; Project Manager1; Project Manager2 |  |  |  |  |  |

| ID | WBS | Task | Type | Duration | Start | Finish | Predecessors | Baseline start | Baseline finish | Baseline duration | Total slack | Resources | Work | Cost | Baseline cost |
| --- | --- | --- | --- | --- | --- | --- | --- | --- | --- | --- | --- | --- | --- | --- | --- |
| 26 | 1.3.2 | **Release 2** |  | 89.82d | 2021-08-31 | 2022-01-04 |  | 2021-09-07 | 2022-01-14 | 94d | 0d |  | 3304h | 214,705.99 | 212,157.2 |
| 27 | 1.3.2.1 | Analysis phase |  | 26d | 2021-08-31 | 2021-10-06 | 18 | 2021-09-07 | 2021-10-12 | 26d | 0d | Business Intelligence Analyst; Cellphone6; Cellphone7; Cellphone8; Laptop6; Laptop7; Laptop8; System Analyst1; System Analyst2 | 624h | 39,346.4 | 39,346.4 |
| 28 | 1.3.2.2 | Design phase |  | 26d | 2021-10-06 | 2021-11-11 | 27 | 2021-10-13 | 2021-11-17 | 26d | 0d | Cellphone3; Laptop3; PDA3; Senior Architect; Technical Lead; Cellphone4; Laptop4; Cellphone7; Laptop7; System Analyst1 | 624h | 44,974.24 | 44,974.24 |
| 29 | 1.3.2.3 | Construction phase |  | 18.82d | 2021-11-11 | 2021-12-08 | 28 | 2021-11-18 | 2021-12-20 | 23d | 0d | Developer1; Developer2; Developer3; Developer4; Developer5; Developer6; Developer7; Cellphone4; Desktop1; Desktop2; Desktop3; Desktop4; Laptop4; Laptop9; Laptop10; Laptop11; Technical Lead; Desktop5; Desktop6; Developer8; Desktop7; Developer9; Developer10; Laptop13 | 1656h | 96,521.35 | 93,972.56 |
| 30 | 1.3.2.4 | Validation phase |  | 12d | 2021-12-08 | 2021-12-24 | 29 | 2021-12-21 | 2022-01-05 | 12d | 0d | Cellphone5; Desktop5; Laptop5; Laptop12; Quality Assurance Lead; Tester1; Tester2 | 288h | 17,754.72 | 17,754.72 |
| 31 | 1.3.2.5 | Deployment phase |  | 5d | 2021-12-24 | 2021-12-31 | 30 | 2022-01-06 | 2022-01-12 | 5d | 0d | Cellphone4; Laptop4; Technical Lead; Developer2; Laptop10 | 80h | 8,445.6 | 8,445.6 |
| 32 | 1.3.2.6 | Closeout |  | 2d | 2021-12-31 | 2022-01-04 | 31 | 2022-01-13 | 2022-01-14 | 2d | 0d | Cellphone3; Cellphone4; Laptop3; Laptop4; PDA3; Senior Architect; Technical Lead | 32h | 7,663.68 | 7,663.68 |
| 33 | 1.3.2.7 | Release 2 Complete | milestone | 0d | 2022-01-04 | 2022-01-04 | 32 | 2022-01-14 | 2022-01-14 | 0d | 0d | Cellphone1; Cellphone2; Laptop1; Laptop2; PDA1; PDA2; Project Manager1; Project Manager2 |  |  |  |
| 34 | 1.3.3 | **Release 3** |  | 75.36d | 2022-01-04 | 2022-04-19 |  | 2022-01-17 | 2022-05-05 | 79d | 0d |  | 2816h | 188,960.75 | 186,392.24 |
| 35 | 1.3.3.1 | Analysis phase |  | 22d | 2022-01-04 | 2022-02-03 | 26 | 2022-01-17 | 2022-02-15 | 22d | 0d | Business Intelligence Analyst; Cellphone6; Cellphone7; Cellphone8; Laptop6; Laptop7; Laptop8; System Analyst1; System Analyst2 | 528h | 34,400.8 | 34,400.8 |
| 36 | 1.3.3.2 | Design phase |  | 22d | 2022-02-03 | 2022-03-07 | 35 | 2022-02-16 | 2022-03-17 | 22d | 0d | Business Intelligence Analyst; Cellphone3; Laptop3; PDA3; Senior Architect; Technical Lead; Cellphone4; Cellphone6; Laptop4; Laptop6 | 528h | 38,500.48 | 38,500.48 |
| 37 | 1.3.3.3 | Construction phase |  | 16.36d | 2022-03-07 | 2022-03-29 | 36 | 2022-03-18 | 2022-04-14 | 20d | 0d | Developer1; Developer2; Developer3; Developer4; Developer5; Developer6; Developer7; Cellphone4; Desktop1; Desktop2; Desktop3; Desktop4; Laptop4; Laptop9; Laptop10; Laptop11; Technical Lead; Desktop5; Desktop6; Developer8; Desktop7; Developer9; Developer10; Laptop13 | 1440h | 86,122.91 | 83,554.4 |
| 38 | 1.3.3.4 | Validation phase |  | 10d | 2022-03-29 | 2022-04-12 | 37 | 2022-04-15 | 2022-04-28 | 10d | 0d | Cellphone5; Desktop5; Laptop5; Laptop12; Quality Assurance Lead; Tester1; Tester2 | 240h | 15,645.6 | 15,645.6 |
| 39 | 1.3.3.5 | Deployment phase |  | 4d | 2022-04-12 | 2022-04-18 | 38 | 2022-04-29 | 2022-05-04 | 4d | 0d | Cellphone4; Developer1; Laptop4; Laptop9; Technical Lead | 64h | 7,609.12 | 7,609.12 |
| 40 | 1.3.3.6 | Closeout |  | 1d | 2022-04-18 | 2022-04-19 | 39 | 2022-05-05 | 2022-05-05 | 1d | 0d | Cellphone3; Cellphone4; Laptop3; Laptop4; PDA3; Senior Architect; Technical Lead | 16h | 6,681.84 | 6,681.84 |
| 41 | 1.3.3.7 | Release 3 Complete | milestone | 0d | 2022-04-19 | 2022-04-19 | 40 | 2022-05-05 | 2022-05-05 | 0d | 0d | Cellphone1; Cellphone2; Laptop1; Laptop2; PDA1; PDA2; Project Manager1; Project Manager2 |  |  |  |
| 42 | 1.3.4 | **Release 4** |  | 63.27d | 2022-04-19 | 2022-07-15 |  | 2022-05-06 | 2022-08-05 | 66d | 0d |  | 2264h | 161,739.62 | 159,138.24 |
| 43 | 1.3.4.1 | Analysis phase |  | 18d | 2022-04-19 | 2022-05-13 | 34 | 2022-05-06 | 2022-05-31 | 18d | 0d | Business Intelligence Analyst; Cellphone6; Cellphone7; Cellphone8; Laptop6; Laptop7; Laptop8; System Analyst1; System Analyst2 | 432h | 29,455.2 | 29,455.2 |
| 44 | 1.3.4.2 | Design phase |  | 18d | 2022-05-13 | 2022-06-08 | 43 | 2022-06-01 | 2022-06-24 | 18d | 0d | Cellphone3; Laptop3; PDA3; Senior Architect; Technical Lead; Cellphone4; Laptop4; Cellphone7; Laptop7; System Analyst1 | 432h | 33,628.32 | 33,628.32 |
| 45 | 1.3.4.3 | Construction phase |  | 12.27d | 2022-06-08 | 2022-06-24 | 44 | 2022-06-27 | 2022-07-15 | 15d | 0d | Developer1; Developer2; Developer3; Developer4; Developer5; Developer6; Developer7; Cellphone4; Desktop1; Desktop2; Desktop3; Desktop4; Laptop4; Laptop9; Laptop10; Laptop11; Technical Lead; Desktop5; Desktop6; Developer8; Desktop7; Developer9; Developer10; Laptop13 | 1080h | 68,792.18 | 66,190.8 |
| 46 | 1.3.4.4 | Validation phase |  | 10d | 2022-06-24 | 2022-07-08 | 45 | 2022-07-18 | 2022-07-29 | 10d | 0d | Cellphone5; Desktop5; Laptop5; Laptop12; Quality Assurance Lead; Tester1; Tester2 | 240h | 15,645.6 | 15,645.6 |
| 47 | 1.3.4.5 | Deployment phase |  | 4d | 2022-07-08 | 2022-07-14 | 46 | 2022-08-01 | 2022-08-04 | 4d | 0d | Cellphone4; Laptop4; Technical Lead; Developer2; Laptop10 | 64h | 7,536.48 | 7,536.48 |
| 48 | 1.3.4.6 | Closeout |  | 1d | 2022-07-14 | 2022-07-15 | 47 | 2022-08-05 | 2022-08-05 | 1d | 0d | Cellphone3; Cellphone4; Laptop3; Laptop4; PDA3; Senior Architect; Technical Lead | 16h | 6,681.84 | 6,681.84 |
| 49 | 1.3.4.7 | Release 4 Complete | milestone | 0d | 2022-07-15 | 2022-07-15 | 48 | 2022-08-05 | 2022-08-05 | 0d | 0d | Cellphone1; Cellphone2; Laptop1; Laptop2; PDA1; PDA2; Project Manager1; Project Manager2 |  |  |  |
| 50 | 1.3.5 | Execution complete | milestone | 0d | 2022-07-15 | 2022-07-15 | 18, 26, 34, 42 | 2022-08-05 | 2022-08-05 | 0d | 0d |  |  |  |  |
| 51 | 1.4 | Project Closeout |  | 1d | 2022-07-15 | 2022-07-18 | 17 | 2022-08-08 | 2022-08-08 | 1d | 0d | Cellphone2; Laptop2; PDA2; Project Manager2 | 8h | 4,045.44 | 4,045.44 |
| 52 | 1.5 | Project Complete | milestone | 0d | 2022-07-18 | 2022-07-18 | 51 | 2022-08-08 | 2022-08-08 | 0d | 0d | Cellphone1; Laptop1; PDA1; Project Manager1 |  |  |  |
